# TIẾN ĐỘ THI CÔNG CẦU THÔN KHAI HOANG 2 (Km14+363,65 - ĐƯỜNG ĐỒNG VĂN - MỐC 456, HÀ GIANG)

Schedule from MS Project XML, 2026-10-01 to 2027-03-23.

## Resources

| Resource |
| --- |
| Tổ trắc đạc & giải phóng mặt bằng |
| Tổ thợ sắt thép kết cấu cầu |
| Tổ thợ ván khuôn đà giáo |
| Tổ thợ đổ bê tông & đầm dùi |
| Tổ cẩu lắp dầm chuyên dụng (Cẩu 50T) |
| Tổ thợ hoàn thiện mặt cầu & khe co giãn |
| Tổ thợ nền mặt đường hai đầu cầu |
| Máy xúc gầu 1.2m3 & búa đục đá |
| Xe lu rung 14T & xe thảm nhựa |

## Schedule

| ID | WBS | Task | Duration | Start | Finish | Predecessors |
| --- | --- | --- | --- | --- | --- | --- |
| 1 | 1.0 | **CHUẨN BỊ MẶT BẰNG & CÔNG TRÌNH TẠM** | 19d | 2026-10-01 | 2026-10-19 |  |
| 2 | 1.1 | Bàn giao tim mốc, cọc cao độ mốc tọa độ VN2000 | 2d | 2026-10-01 | 2026-10-02 |  |
| 3 | 1.2 | Rà phá bom mìn, dọn dẹp mặt bằng thi công & lán trại | 5d | 2026-10-03 | 2026-10-07 | 2 |
| 4 | 1.3 | Thi công đường công vụ vượt suối, bãi đúc dầm & bãi tập kết | 12d | 2026-10-08 | 2026-10-19 | 3 |
| 5 | 2.0 | **KẾT CẤU PHẦN DƯỚI (MỐ M1 VÀ MỐ M2)** | 75d | 2026-10-20 | 2027-01-03 |  |
| 6 | 2.1 | Đào hố móng bệ mố M1, M2 ngàm vào nền đá gốc (h >= 50cm) | 8d | 2026-10-20 | 2026-10-27 | 4 |
| 7 | 2.2 | Khoan lỗ và cắm 98 thanh thép neo D32 L=1.0m vào đá gốc | 5d | 2026-10-28 | 2026-11-01 | 6 |
| 8 | 2.3 | Rải đá dăm đệm và đổ bê tông lót đáy bệ móng mố M1, M2 | 2d | 2026-11-02 | 2026-11-03 | 7 |
| 9 | 2.4 | Gia công lắp dựng cốt thép bệ móng mố M1, M2 (D16, D22, D25) | 5d | 2026-11-04 | 2026-11-08 | 8 |
| 10 | 2.5 | Lắp dựng ván khuôn bệ móng mố M1, M2 | 7d | 2026-11-09 | 2026-11-15 | 9 |
| 11 | 2.6 | Đổ bê tông bệ móng mố M1, M2 mác 30 MPa (kết hợp đầm dùi) | 7d | 2026-11-16 | 2026-11-22 | 10 |
| 12 | 2.7 | Bảo dưỡng bê tông bệ móng mố (chờ đạt cường độ R7) | 7d | 2026-11-23 | 2026-11-29 | 11 |
| 13 | 2.8 | Gia công lắp dựng cốt thép thân mố, tường cánh, tường đỉnh M1, M2 | 5d | 2026-11-30 | 2026-12-04 | 12 |
| 14 | 2.9 | Lắp dựng ván khuôn thân mố, tường cánh và xà mũ mố | 9d | 2026-12-05 | 2026-12-13 | 13 |
| 15 | 2.10 | Đổ bê tông thân mố, tường cánh, tường đỉnh M1, M2 (30 MPa) | 3d | 2026-12-14 | 2026-12-16 | 14 |
| 16 | 2.11 | Đổ bê tông đá kê gối, ụ neo dầm & lắp đặt 8 gối cao su bản thép | 4d | 2026-12-17 | 2026-12-20 | 15 |
| 17 | 2.12 | Đắp đất chọn lọc lòng mố (K98) & quét 2 lớp nhựa đường chống thấm mặt mố | 13d | 2026-12-21 | 2027-01-03 | 16 |
| 18 | 3.0 | **KẾT CẤU NHỊP DẦM T 15m (ĐÚC DẦM & LAO LẮP)** | 77d | 2026-11-20 | 2027-02-06 |  |
| 19 | 3.1 | Gia công lắp dựng cốt thép 4 phiến dầm T L=15m tại bãi đúc | 33d | 2026-11-20 | 2026-12-22 | 11 |
| 20 | 3.2 | Lắp dựng ván khuôn thép định hình dầm T 15m | 12d | 2026-12-23 | 2027-01-03 | 19 |
| 21 | 3.3 | Đổ bê tông 4 phiến dầm T 15m (Bê tông C40/C35 mác cao) | 2d | 2027-01-04 | 2027-01-05 | 20 |
| 22 | 3.4 | Dưỡng hộ bê tông dầm T đủ 28 ngày đạt cường độ thiết kế | 28d | 2027-01-06 | 2027-02-02 | 21 |
| 23 | 3.5 | Vận chuyển và cẩu lắp 4 phiến dầm T vào vị trí mố M1, M2 | 2d | 2027-02-03 | 2027-02-04 | 16, 22 |
| 24 | 3.6 | Lắp cốt thép, ván khuôn và đổ bê tông dầm ngang, mối nối ướt dầm T | 2d | 2027-02-05 | 2027-02-06 | 23 |

| ID | WBS | Task | Duration | Start | Finish | Predecessors |
| --- | --- | --- | --- | --- | --- | --- |
| 25 | 4.0 | **MẶT CẦU, HOÀN THIỆN & ĐƯỜNG ĐẦU CẦU** | 45d | 2027-02-07 | 2027-03-23 |  |
| 26 | 4.1 | Lắp dựng cốt thép bản mặt cầu (lưới thép D6) & ván khuôn treo | 2d | 2027-02-07 | 2027-02-08 | 24 |
| 27 | 4.2 | Đổ bê tông bản mặt cầu tại chỗ (Bê tông 30 MPa) | 2d | 2027-02-09 | 2027-02-10 | 26 |
| 28 | 4.3 | Dưỡng hộ bê tông bản mặt cầu (chờ đạt cường độ R14) | 14d | 2027-02-11 | 2027-02-24 | 27 |
| 29 | 4.4 | Đổ bê tông gờ lan can, lắp dựng lan can thép mạ kẽm & ống thoát nước D150 | 3d | 2027-02-25 | 2027-02-27 | 28 |
| 30 | 4.5 | Lắp đặt 02 khe co giãn thép răng lược HP50 & chèn vữa không co ngót 50 MPa | 4d | 2027-02-28 | 2027-03-03 | 28 |
| 31 | 4.6 | Phun lớp chống thấm mặt cầu & thảm bê tông nhựa chặt C12.5 dày 7cm | 1d | 2027-03-04 | 2027-03-04 | 30 |
| 32 | 4.7 | Thi công 2 bản quá độ BTCT 25 MPa & đắp đất đoạn chuyển tiếp K95 | 2d | 2027-03-05 | 2027-03-06 | 31 |
| 33 | 4.8 | Gia cố ốp mái taluy mố bằng BTXM 20 MPa dày 20cm trên đệm đá dăm & tường chắn | 5d | 2027-03-07 | 2027-03-11 | 32 |
| 34 | 4.9 | Thi công kết cấu nền mặt đường hai đầu cầu nối tuyến | 8d | 2027-03-12 | 2027-03-19 | 32 |
| 35 | 4.10 | Thử tải cầu, kiểm định tĩnh/động & nghiệm thu bàn giao đưa vào khai thác | 4d | 2027-03-20 | 2027-03-23 | 34 |
